# USP Projekat 2018

Schedule from MS Project, 2018-07-02 to 2021-07-01, costs in €.
AGEDIS - Advanced Garbage Evidention and DIsposal System
Elektrotehnički fakultet u Beogradu
Projekat koji modernizuje sistem bacanja đubreta i evidencije plaćenih računa

## Calendars

- Standard: Mon-Fri 08:00-12:00, 13:00-17:00; Sat-Sun off. Exceptions (off unless hours are given): 2018-12-30 to 2019-12-30 (Nova Godina, recurring), 2019-01-08 to 2021-01-08 (Božić, recurring).

## Resources

| Resource | Group | Unit | Rate |
| --- | --- | --- | --- |
| BMU - Menadžeri | BMU |  | 35 |
| BMU - Istraživači | BMU |  | 26.75 |
| BMU - Tehničko osoblje | BMU |  | 20.25 |
| BMU - Administrativno osoblje | BMU |  | 16.38 |
| Vaisala - Menadžeri | Vaisala |  | 35 |
| Vaisala - Istraživači | Vaisala |  | 26.75 |
| Vaisala - Tehničko osoblje | Vaisala |  | 20.25 |
| Vaisala - Administrativno osoblje | Vaisala |  | 16.38 |
| SR - Menadžeri | Swedish Recycling |  | 36.75 |
| SR - Istraživači | Swedish Recycling |  | 30.13 |
| SR - Tehničko osoblje | Swedish Recycling |  | 23.75 |
| SR - Administrativno osoblje | Swedish Recycling |  | 19.63 |
| Xebia - Menadžeri | Xebia |  | 36.75 |
| Xebia - Istraživači | Xebia |  | 30.13 |
| Xebia - Tehničko osoblje | Xebia |  | 23.75 |
| Xebia - Administrativno osoblje | Xebia |  | 19.63 |
| ETF - Menadžeri | Elektortehnički fakultet |  | 13.5 |
| ETF - Istraživači | Elektortehnički fakultet |  | 10 |
| ETF - Tehničko osoblje | Elektortehnički fakultet |  | 7.13 |
| ETF - Administrativno osoblje | Elektortehnički fakultet |  | 5.63 |
| Licenca za softver za generisanje statistike | Licenca | licenca | 1666.67 |
| Licenca za softver za modelovanje aplikacije | Licenca | licenca | 1666.67 |
| Licenca za softver za testiranje | Licenca | licenca | 833.33 |
| Server sale |  |  | 50000 |
| Modemi za pametne kante |  |  | 75000 |
| Senzori za pametne kante |  |  | 50000 |
| Reklamni materijal |  |  | 16666.7 |
| Ulaznice za konferencije |  |  | 833.33 |
| Materijali za podršku klijenata |  |  | 333.33 |
| Eksterna verifikacija modela sistema |  |  | 5333.33 |
| Licenca za Microsoft Project | Licenca | licenca | 1800 |
| Proizvodnja pametnih kanti |  |  | 80000 |
| Reklamni video materijali |  |  | 13666.7 |

## Schedule

| ID | WBS | Task | Duration | Start | Finish | Predecessors | Total slack | Free slack |
| --- | --- | --- | --- | --- | --- | --- | --- | --- |
| 1 | 1 | **WP1 - Analiza tržišta i korisničkih zahteva** | 88d | 2018-07-02 | 2018-10-31 |  |  |  |
| 2 | 1.1 | **Analiza tržišta** | 44d | 2018-07-02 | 2018-08-30 |  | 2d |  |
| 3 | 1.1.1 | **Iniciranje analize tržišta** | 5d | 2018-07-02 | 2018-07-06 |  | 2d | 0d |
| 4 | 1.1.1.1 | Selekcija ljudi | 2d | 2018-07-02 | 2018-07-03 |  | 2d | 0d |
| 5 | 1.1.1.2 | Formiranje timova | 2d | 2018-07-04 | 2018-07-05 | 4 | 2d | 0d |
| 6 | 1.1.1.3 | Dobijanje odobrenja o validnosti timova | 1d | 2018-07-06 | 2018-07-06 | 5 | 2d |  |
| 7 | 1.1.2 | **Planiranje analize tržišta** | 10d | 2018-07-09 | 2018-07-20 | 3 | 2d | 0d |
| 8 | 1.1.2.1 | Definisanje svih potrebnih aktivnosti faze | 5d | 2018-07-09 | 2018-07-13 |  | 2d | 0d |
| 9 | 1.1.2.2 | Dodeljivanje aktivnosti timovima | 2d | 2018-07-16 | 2018-07-17 | 8 | 2d | 0d |
| 10 | 1.1.2.3 | Iniciranje kontakta sa komunalnim službama | 7d | 2018-07-09 | 2018-07-17 |  | 2d | 0d |
| 11 | 1.1.2.4 | Dodeljivanje lokacija timovima | 1d | 2018-07-18 | 2018-07-18 | 10, 9 | 2d | 0d |
| 12 | 1.1.2.5 | Pisanje izveštaja o planu | 1d | 2018-07-19 | 2018-07-19 | 11 | 2d | 0d |
| 13 | 1.1.2.6 | Dobijanje dozvole od višeg menadžmenta | 1d | 2018-07-20 | 2018-07-20 | 12 | 2d |  |
| 14 | 1.1.3 | **Izvršavanje analize tržišta** | 24d | 2018-07-23 | 2018-08-23 | 7 | 2d |  |
| 15 | 1.1.3.1 | Prepoznavanje trenutnog stanja | 2d | 2018-07-23 | 2018-07-24 |  | 49d | 0d |
| 16 | 1.1.3.2 | **Rad na terenu** | 20d | 2018-07-25 | 2018-08-21 | 15 |  |  |
| 17 | 1.1.3.2.1 | **Rad na terenu 1** | 5d | 2018-07-25 | 2018-07-31 |  | 49d | 0d |
| 18 | 1.1.3.2.1.1 | Sastanak sa komunalnom službom | 1d | 2018-07-25 | 2018-07-25 |  | 49d | 0d |
| 19 | 1.1.3.2.1.2 | Analiziranje konkretnog stanja | 3d | 2018-07-26 | 2018-07-30 | 18 | 49d | 0d |
| 20 | 1.1.3.2.1.3 | Pisanje lokalnog izveštaja | 1d | 2018-07-31 | 2018-07-31 | 19 | 49d |  |
| 21 | 1.1.3.2.2 | **Rad na terenu 2** | 5d | 2018-08-01 | 2018-08-07 | 17 | 49d | 0d |
| 22 | 1.1.3.2.2.1 | Sastanak sa komunalnom službom | 1d | 2018-08-01 | 2018-08-01 |  | 49d | 0d |
| 23 | 1.1.3.2.2.2 | Analiziranje konkretnog stanja | 3d | 2018-08-02 | 2018-08-06 | 22 | 49d | 0d |
| 24 | 1.1.3.2.2.3 | Pisanje lokalnog izveštaja | 1d | 2018-08-07 | 2018-08-07 | 23 | 49d |  |

| ID | WBS | Task | Type | Duration | Start | Finish | Predecessors | Total slack | Free slack | Constraint |
| --- | --- | --- | --- | --- | --- | --- | --- | --- | --- | --- |
| 25 | 1.1.3.2.3 | **Rad na terenu 3** |  | 5d | 2018-08-08 | 2018-08-14 | 21 | 49d | 0d |  |
| 26 | 1.1.3.2.3.1 | Sastanak sa komunalnom službom |  | 1d | 2018-08-08 | 2018-08-08 |  | 49d | 0d |  |
| 27 | 1.1.3.2.3.2 | Analiziranje konkretnog stanja |  | 3d | 2018-08-09 | 2018-08-13 | 26 | 49d | 0d |  |
| 28 | 1.1.3.2.3.3 | Pisanje lokalnog izveštaja |  | 1d | 2018-08-14 | 2018-08-14 | 27 | 49d |  |  |
| 29 | 1.1.3.2.4 | **Rad na terenu 4** |  | 5d | 2018-08-15 | 2018-08-21 | 25 | 49d |  |  |
| 30 | 1.1.3.2.4.1 | Sastanak sa komunalnom službom |  | 1d | 2018-08-15 | 2018-08-15 |  | 49d | 0d |  |
| 31 | 1.1.3.2.4.2 | Analiziranje konkretnog stanja |  | 3d | 2018-08-16 | 2018-08-20 | 30 | 49d | 0d |  |
| 32 | 1.1.3.2.4.3 | Pisanje lokalnog izveštaja |  | 1d | 2018-08-21 | 2018-08-21 | 31 | 49d |  |  |
| 33 | 1.1.3.3 | Sumiranje rezultata | manual | 2d | 2018-08-22 | 2018-08-23 | 16 |  |  |  |
| 34 | 1.1.4 | **Monitoring I kontrola analize tržišta** |  | 44d | 2018-07-02 | 2018-08-30 |  | 4d |  |  |
| 35 | 1.1.4.1 | Uspostavljenje sistema za praćenje napretka |  | 5d | 2018-07-02 | 2018-07-06 |  | 44d | 0d |  |
| 36 | 1.1.4.2 | Praćenje napretka |  | 39d | 2018-07-09 | 2018-08-30 | 35 | 44d |  |  |
| 37 | 1.1.4.3 | Otkrivanje I rešavanje problema |  | 44d | 2018-07-02 | 2018-08-30 |  | 44d |  |  |
| 38 | 1.1.4.4 | **Izveštavanje o statusu analize** |  | 30.75d | 2018-07-06 | 2018-08-17 |  | 0d |  |  |
| 39 | 1.1.4.4.1 | Izveštavanje o statusu analize 1 | manual | 1d | 2018-07-06 | 2018-07-06 |  |  |  | start no earlier than 2018-07-06 |
| 40 | 1.1.4.4.2 | Izveštavanje o statusu analize 2 | manual | 1d | 2018-07-13 | 2018-07-13 |  |  |  | start no earlier than 2018-07-13 |
| 41 | 1.1.4.4.3 | Izveštavanje o statusu analize 3 | manual | 1d | 2018-07-20 | 2018-07-20 |  |  |  | start no earlier than 2018-07-20 |
| 42 | 1.1.4.4.4 | Izveštavanje o statusu analize 4 | manual | 1d | 2018-07-27 | 2018-07-27 |  |  |  | start no earlier than 2018-07-27 |
| 43 | 1.1.4.4.5 | Izveštavanje o statusu analize 5 | manual | 1d | 2018-08-03 | 2018-08-03 |  |  |  | start no earlier than 2018-08-03 |
| 44 | 1.1.4.4.6 | Izveštavanje o statusu analize 6 | manual | 1d | 2018-08-10 | 2018-08-10 |  |  |  | start no earlier than 2018-08-10 |
| 45 | 1.1.4.4.7 | Izveštavanje o statusu analize 7 | manual | 1d | 2018-08-17 | 2018-08-17 |  |  |  | start no earlier than 2018-08-17 |
| 46 | 1.1.5 | **Zatvaranje analize tržišta** |  | 5d | 2018-07-02 | 2018-07-06 |  | 83d |  |  |
| 47 | 1.1.5.1 | Pisanje završnog izveštaja |  | 2d | 2018-07-02 | 2018-07-03 |  | 83d | 0d |  |
| 48 | 1.1.5.2 | Izvršavanje revizije kompletne analize |  | 1d | 2018-07-04 | 2018-07-04 | 47 | 83d | 0d |  |
| 49 | 1.1.5.3 | Dobijanje odobrenja od menadžera |  | 2d | 2018-07-05 | 2018-07-06 | 48 | 83d |  |  |

| ID | WBS | Task | Duration | Start | Finish | Predecessors | Total slack | Free slack |
| --- | --- | --- | --- | --- | --- | --- | --- | --- |
| 50 | 1.2 | **Analiza korisničkih zahteva** | 88d | 2018-07-02 | 2018-10-31 |  | 0d |  |
| 51 | 1.2.1 | **Iniciranje analize korisničkih zahteva** | 10d | 2018-07-02 | 2018-07-13 |  | 78d |  |
| 52 | 1.2.1.1 | Napisati one-page opis posla | 1d | 2018-07-02 | 2018-07-02 |  | 78d | 0d |
| 53 | 1.2.1.2 | Selekcija ljudi | 4d | 2018-07-03 | 2018-07-06 | 52 | 78d | 0d |
| 54 | 1.2.1.3 | Formiranje timova | 4d | 2018-07-09 | 2018-07-12 | 53 | 78d | 0d |
| 55 | 1.2.1.4 | Dobijanje odobrenja o validnosti timova | 1d | 2018-07-13 | 2018-07-13 | 54 | 78d |  |
| 56 | 1.2.2 | **Planiranje analize korisničkih zahteva** | 15d | 2018-07-02 | 2018-07-20 |  | 73d |  |
| 57 | 1.2.2.1 | Definisanje svih potrebnih aktivnosti faze | 5d | 2018-07-02 | 2018-07-06 |  | 73d | 0d |
| 58 | 1.2.2.2 | Dodeljivanje aktivnosti timovima | 3d | 2018-07-09 | 2018-07-11 | 57 | 73d | 0d |
| 59 | 1.2.2.3 | Priprema sistema za anketiranje | 5d | 2018-07-12 | 2018-07-18 | 58 | 73d | 0d |
| 60 | 1.2.2.4 | Priprema baza podataka za skladištenje rezultata anketa | 5d | 2018-07-12 | 2018-07-18 | 58 | 73d | 0d |
| 61 | 1.2.2.5 | Pisanje izveštaja o planu | 1d | 2018-07-19 | 2018-07-19 | 59, 60 | 73d | 0d |
| 62 | 1.2.2.6 | Dobijanje dozvole od višeg menadžmenta | 1d | 2018-07-20 | 2018-07-20 | 61 | 73d |  |
| 63 | 1.2.3 | **Izvršavanje analize korisničkih zahteva** | 53d | 2018-07-02 | 2018-09-12 |  | 35d |  |
| 64 | 1.2.3.1 | **Izvršavanje anketa** | 20d | 2018-07-02 | 2018-07-27 |  | 35d | 0d |
| 65 | 1.2.3.1.1 | Pisanje korisničkih anketa | 3d | 2018-07-02 | 2018-07-04 |  | 35d | 0d |
| 66 | 1.2.3.1.2 | Izvršavanje anketa | 12d | 2018-07-05 | 2018-07-20 | 65 | 35d | 0d |
| 67 | 1.2.3.1.3 | Analiziranje rezultata anketa | 4d | 2018-07-23 | 2018-07-26 | 66 | 35d | 0d |
| 68 | 1.2.3.1.4 | Dokumentovanje rezultata anketa | 1d | 2018-07-27 | 2018-07-27 | 67 | 35d |  |
| 69 | 1.2.3.2 | Izvršavanje intervjua | 20d | 2018-07-02 | 2018-07-27 |  | 35d | 0d |
| 70 | 1.2.3.3 | Organizacija tribina | 20d | 2018-07-02 | 2018-07-27 |  | 35d | 0d |
| 71 | 1.2.3.4 | Sumiranje rezultata | 3d | 2018-07-30 | 2018-08-01 | 64, 69, 70 | 35d | 0d |
| 72 | 1.2.3.5 | Pisanje slučajeva korišćenja | 18d | 2018-08-02 | 2018-08-27 | 71 | 35d | 0d |
| 73 | 1.2.3.6 | Kreiranje Requirements Breakdown Structure (RBS) dokumenta | 10d | 2018-08-28 | 2018-09-10 | 72 | 35d | 0d |
| 74 | 1.2.3.7 | Pisanje konačnog izveštaja | 2d | 2018-09-11 | 2018-09-12 | 73 | 35d |  |

| ID | WBS | Task | Type | Duration | Start | Finish | Predecessors | Total slack | Free slack | Constraint |
| --- | --- | --- | --- | --- | --- | --- | --- | --- | --- | --- |
| 75 | 1.2.4 | **Monitoring i kontrola analize korisničkih zahteva** |  | 88d | 2018-07-02 | 2018-10-31 |  | 0d |  |  |
| 76 | 1.2.4.1 | Uspostavljenje sistema za praćenje napretka |  | 8d | 2018-07-02 | 2018-07-11 |  | 0d |  |  |
| 77 | 1.2.4.2 | Praćenje napretka |  | 80d | 2018-07-12 | 2018-10-31 | 76 | 0d |  |  |
| 78 | 1.2.4.3 | Otkrivanje I rešavanje problema |  | 88d | 2018-07-02 | 2018-10-31 |  | 0d |  |  |
| 79 | 1.2.4.4 | **Izveštavanje o statusu analize** |  | 80.75d | 2018-07-06 | 2018-10-26 |  | 0d |  |  |
| 80 | 1.2.4.4.1 | Izveštavanje o statusu analize 1 | manual | 1d | 2018-07-06 | 2018-07-06 |  |  |  | start no earlier than 2018-07-06 |
| 81 | 1.2.4.4.2 | Izveštavanje o statusu analize 2 | manual | 1d | 2018-07-13 | 2018-07-13 |  |  |  | start no earlier than 2018-07-13 |
| 82 | 1.2.4.4.3 | Izveštavanje o statusu analize 3 | manual | 1d | 2018-07-20 | 2018-07-20 |  |  |  | start no earlier than 2018-07-20 |
| 83 | 1.2.4.4.4 | Izveštavanje o statusu analize 4 | manual | 1d | 2018-07-27 | 2018-07-27 |  |  |  | start no earlier than 2018-07-27 |
| 84 | 1.2.4.4.5 | Izveštavanje o statusu analize 5 | manual | 1d | 2018-08-03 | 2018-08-03 |  |  |  | start no earlier than 2018-08-03 |
| 85 | 1.2.4.4.6 | Izveštavanje o statusu analize 6 | manual | 1d | 2018-08-10 | 2018-08-10 |  |  |  | start no earlier than 2018-08-10 |
| 86 | 1.2.4.4.7 | Izveštavanje o statusu analize 7 | manual | 1d | 2018-08-17 | 2018-08-17 |  |  |  | start no earlier than 2018-08-17 |
| 87 | 1.2.4.4.8 | Izveštavanje o statusu analize 8 | manual | 1d | 2018-08-24 | 2018-08-24 |  |  |  | start no earlier than 2018-08-24 |
| 88 | 1.2.4.4.9 | Izveštavanje o statusu analize 9 | manual | 1d | 2018-08-31 | 2018-08-31 |  |  |  | start no earlier than 2018-08-31 |
| 89 | 1.2.4.4.10 | Izveštavanje o statusu analize 10 | manual | 1d | 2018-09-07 | 2018-09-07 |  |  |  | start no earlier than 2018-09-07 |
| 90 | 1.2.4.4.11 | Izveštavanje o statusu analize 11 | manual | 1d | 2018-09-14 | 2018-09-14 |  |  |  | start no earlier than 2018-09-14 |
| 91 | 1.2.4.4.12 | Izveštavanje o statusu analize 12 | manual | 1d | 2018-09-21 | 2018-09-21 |  |  |  | start no earlier than 2018-09-21 |
| 92 | 1.2.4.4.13 | Izveštavanje o statusu analize 13 | manual | 1d | 2018-09-28 | 2018-09-28 |  |  |  | start no earlier than 2018-09-28 |
| 93 | 1.2.4.4.14 | Izveštavanje o statusu analize 14 | manual | 1d | 2018-10-05 | 2018-10-05 |  |  |  | start no earlier than 2018-10-05 |
| 94 | 1.2.4.4.15 | Izveštavanje o statusu analize 15 | manual | 1d | 2018-10-12 | 2018-10-12 |  |  |  | start no earlier than 2018-10-12 |
| 95 | 1.2.4.4.16 | Izveštavanje o statusu analize 16 | manual | 1d | 2018-10-19 | 2018-10-19 |  |  |  | start no earlier than 2018-10-19 |
| 96 | 1.2.4.4.17 | Izveštavanje o statusu analize 17 | manual | 1d | 2018-10-26 | 2018-10-26 |  |  |  | start no earlier than 2018-10-26 |
| 97 | 1.2.5 | **Zatvaranje analize korisničkih zahteva** |  | 10d | 2018-07-02 | 2018-07-13 |  | 78d |  |  |
| 98 | 1.2.5.1 | Pisanje završnog izveštaja |  | 4d | 2018-07-02 | 2018-07-05 |  | 78d | 0d |  |
| 99 | 1.2.5.2 | Izvršavanje revizije kompletne analize |  | 4d | 2018-07-06 | 2018-07-11 | 98 | 78d | 0d |  |
| 100 | 1.2.5.3 | Dobijanje odobrenja od menadžera |  | 2d | 2018-07-12 | 2018-07-13 | 99 | 78d |  |  |
| 101 | 2 | Prekretnica - Završena analiza zahteva i tržišta | milestone, manual | 0d | 2018-11-01 | 2018-11-01 | 1 |  |  |  |

| ID | WBS | Task | Type | Duration | Start | Finish | Predecessors | Total slack | Resources | Work | Cost |
| --- | --- | --- | --- | --- | --- | --- | --- | --- | --- | --- | --- |
| 102 | 3 | **WP2 - Planiranje projekta** |  | 65d | 2018-11-01 | 2019-01-31 | 1 |  |  | 520h | 12,610 |
| 103 | 3.1 | Planiranje budžeta |  | 65d | 2018-11-01 | 2019-01-31 | 104FF, 105FF | 0d | BMU - Menadžeri [50%]; ETF - Menadžeri [50%] | 520h | 12,610 |
| 104 | 3.2 | Planiranje resursa |  | 40d | 2018-11-01 | 2018-12-26 |  | 0d |  |  |  |
| 105 | 3.3 | Planiranje rizika |  | 40d | 2018-11-01 | 2018-12-26 |  | 0d |  |  |  |
| 106 | 3.4 | Raspodela posla po participantima |  | 35d | 2018-11-01 | 2018-12-19 |  | 0d |  |  |  |
| 107 | 3.5 | Određivanje aktivnosti unutar svih faza projekta |  | 30d | 2018-12-20 | 2019-01-31 | 106 | 0d |  |  |  |
| 108 | 3.6 | Određivanje mere kvaliteta i postupaka | manual | 25d | 2018-12-27 | 2019-01-31 | 104, 105 |  |  |  |  |
| 109 | 3.7 | Određivanje načina komunikacije | manual | 25d | 2018-12-27 | 2019-01-31 | 104, 105 |  |  |  |  |
| 110 | 4 | Prekretnica - Završen plan projekta | milestone, manual | 0d | 2019-02-01 | 2019-02-01 | 102 |  |  |  |  |
| 111 | 5 | **WP3 - Modelovanje i dizajn** |  | 106d | 2019-02-01 | 2019-06-28 | 102 |  |  |  |  |
| 112 | 5.1 | **Modelovanje i dizajn veb-portala** |  | 106d | 2019-02-01 | 2019-06-28 |  | 0d |  |  |  |
| 113 | 5.1.1 | Izrada dijagrama slučajeva korišćenja |  | 30d | 2019-02-01 | 2019-03-14 |  | 0d |  |  |  |
| 114 | 5.1.2 | Izrada dijagrama klasa |  | 76d | 2019-03-15 | 2019-06-28 | 113 | 0d |  |  |  |
| 115 | 5.1.3 | Izrada dijagrama sekvenci |  | 76d | 2019-03-15 | 2019-06-28 | 113 | 0d |  |  |  |
| 116 | 5.2 | **Modelovanje i dizajn pametne kante** |  | 106d | 2019-02-01 | 2019-06-28 |  | 0d |  |  |  |
| 117 | 5.2.1 | Dizajn spoljašnjosti kante |  | 106d | 2019-02-01 | 2019-06-28 |  | 0d |  |  |  |
| 118 | 5.2.2 | Modelovanje arhitekture računara |  | 46d | 2019-02-01 | 2019-04-05 |  | 0d |  |  |  |
| 119 | 5.2.3 | Dizajn unutrašnjosti kante |  | 60d | 2019-04-08 | 2019-06-28 | 118 | 0d |  |  |  |
| 120 | 6 | Prekretnica - Završeno modelovanje sistema | milestone, manual | 0d | 2019-07-01 | 2019-07-01 | 111 |  |  |  |  |
| 121 | 7 | **WP4 - Izrada prototipa pametne kante** |  | 66d | 2019-07-01 | 2019-09-30 | 111 |  |  |  |  |
| 122 | 7.1 | Izrada prototipa pametne kante |  | 40d | 2019-07-01 | 2019-08-23 |  | 0d |  |  |  |
| 123 | 7.2 | Izrada interfejsa prema softverskoj komponenti |  | 40d | 2019-07-01 | 2019-08-23 |  | 0d |  |  |  |
| 124 | 7.3 | Izrada grafičkog korisničkog interfejsa |  | 40d | 2019-07-01 | 2019-08-23 |  | 0d |  |  |  |
| 125 | 7.4 | Integracija i validacija prototipa | manual | 26d | 2019-08-26 | 2019-09-30 | 122, 123, 124 |  |  |  |  |

| ID | WBS | Task | Type | Duration | Start | Finish | Predecessors | Total slack |
| --- | --- | --- | --- | --- | --- | --- | --- | --- |
| 126 | 8 | **WP5 - Izrada prototipa veb-portala** |  | 45d | 2019-07-01 | 2019-08-30 | 111 |  |
| 127 | 8.1 | Izrada glavnih stranica |  | 35d | 2019-07-01 | 2019-08-16 |  | 0d |
| 128 | 8.2 | Izrada stranica za korisnike |  | 35d | 2019-07-01 | 2019-08-16 |  | 0d |
| 129 | 8.3 | Izrada stranica za administratore |  | 35d | 2019-07-01 | 2019-08-16 |  | 0d |
| 130 | 8.4 | Validacija i integracija prototipa | manual | 10d | 2019-08-19 | 2019-08-30 | 127, 128, 129 |  |
| 131 | 9 | Prekretnica - Izrađeni prototipi | milestone, manual | 0d | 2019-10-01 | 2019-10-01 | 121, 126 |  |
| 132 | 10 | **WP6 - Implementacija pametne kante** |  | 172d | 2019-10-01 | 2020-05-29 | 121 |  |
| 133 | 10.1 | Kreiranje hardverske komponente |  | 90d | 2019-10-01 | 2020-02-05 |  | 0d |
| 134 | 10.2 | Izrada grafičkog korisničkog interfejsa |  | 60d | 2019-10-01 | 2019-12-23 |  | 112d |
| 135 | 10.3 | **Konfiguracija hardverske komponente** |  | 82d | 2020-02-06 | 2020-05-29 | 133 | 0d |
| 136 | 10.3.1 | Dodavanje matične ploče |  | 30d | 2020-02-06 | 2020-03-18 |  | 0d |
| 137 | 10.3.2 | Dodavanje čipova |  | 15d | 2020-03-19 | 2020-04-08 | 136 | 0d |
| 138 | 10.3.3 | Dodavanje LCD displeja |  | 15d | 2020-04-09 | 2020-04-29 | 137 | 0d |
| 139 | 10.3.4 | Dodavanje senzora |  | 15d | 2020-04-30 | 2020-05-20 | 138 | 0d |
| 140 | 10.3.5 | Dodavanje mini modema |  | 7d | 2020-05-21 | 2020-05-29 | 139 | 0d |
| 141 | 11 | **WP7 - Implementacija veb-portala** |  | 193d | 2019-09-02 | 2020-05-29 | 126 |  |
| 142 | 11.1 | **Frontend implementacija** |  | 150d | 2019-09-02 | 2020-03-31 |  | 0d |
| 143 | 11.1.1 | Izrada glavnih stranica |  | 50d | 2019-09-02 | 2019-11-08 |  | 0d |
| 144 | 11.1.2 | Izrada stranica za korisnike |  | 50d | 2019-11-11 | 2020-01-21 | 143 | 0d |
| 145 | 11.1.3 | Izrada stranica za administratore |  | 50d | 2020-01-22 | 2020-03-31 | 144 | 0d |
| 146 | 11.2 | **Backend implementacija** |  | 150d | 2019-09-02 | 2020-03-31 |  | 0d |
| 147 | 11.2.1 | Izrada kontrolera |  | 120d | 2019-09-02 | 2020-02-18 |  | 0d |
| 148 | 11.2.2 | Omogućavanje komunikacije sa bazom |  | 20d | 2019-09-02 | 2019-09-27 |  | 0d |
| 149 | 11.2.3 | Implementacija biznis logike |  | 60d | 2019-09-30 | 2019-12-20 | 148 | 0d |
| 150 | 11.2.4 | Izrada modela |  | 40d | 2019-12-23 | 2020-02-18 | 149 | 0d |
| 151 | 11.2.5 | Povezivanje sa sistemom za naplatu |  | 30d | 2020-02-19 | 2020-03-31 | 147, 150 | 0d |
| 152 | 11.3 | Integracija frontend i backend dela |  | 43d | 2020-04-01 | 2020-05-29 | 142, 146 | 0d |
| 153 | 12 | Prekretnica - Završena implementacija | milestone, manual | 0d | 2020-06-01 | 2020-06-01 | 132, 141 |  |

| ID | WBS | Task | Type | Duration | Start | Finish | Predecessors | Total slack |
| --- | --- | --- | --- | --- | --- | --- | --- | --- |
| 154 | 13 | **WP8 - Testiranje pametne kante** |  | 88d | 2020-06-01 | 2020-09-30 | 132 |  |
| 155 | 13.1 | Izrada testova |  | 30d | 2020-06-01 | 2020-07-10 |  | 0d |
| 156 | 13.2 | Pokretanje testova |  | 58d | 2020-07-13 | 2020-09-30 | 155 | 0d |
| 157 | 14 | **WP9 - Testiranje veb-portala** |  | 88d | 2020-06-01 | 2020-09-30 | 141 |  |
| 158 | 14.1 | Izrada testova |  | 50d | 2020-06-01 | 2020-08-07 |  | 0d |
| 159 | 14.2 | Pokretanje testova |  | 38d | 2020-08-10 | 2020-09-30 | 158 | 0d |
| 160 | 15 | Prekretnica - Završeno testiranje | milestone, manual | 0d | 2020-10-01 | 2020-10-01 | 154, 157 |  |
| 161 | 16 | **WP10 - Integracija hardvera i softvera** |  | 43d | 2020-10-01 | 2020-11-30 | 154, 157 |  |
| 162 | 16.1 | Koordinisanje postupka integracije |  | 43d | 2020-10-01 | 2020-11-30 |  | 0d |
| 163 | 16.2 | Omogućavanje integracije hardvera |  | 10d | 2020-10-01 | 2020-10-14 |  | 0d |
| 164 | 16.3 | Omogućavanje integracije softvera |  | 5d | 2020-10-01 | 2020-10-07 |  | 5d |
| 165 | 16.4 | Integracija |  | 33d | 2020-10-15 | 2020-11-30 | 163, 164 | 0d |
| 166 | 17 | **WP11 - Integraciono testiranje** |  | 108d | 2020-12-01 | 2021-04-30 | 161 |  |
| 167 | 17.1 | Izrada testova |  | 40d | 2020-12-01 | 2021-01-26 |  | 0d |
| 168 | 17.2 | Pokretanje testova |  | 58d | 2021-01-27 | 2021-04-16 | 167 | 0d |
| 169 | 17.3 | Popravljanje problema |  | 10d | 2021-04-19 | 2021-04-30 | 168 | 0d |
| 170 | 18 | Prekretnica - Integrisana hardverska i softverska komponenta | milestone, manual | 0d | 2021-05-03 | 2021-05-03 | 161, 166 |  |
| 171 | 19 | **WP12 - Puštanje sistema u rad** |  | 43d | 2021-05-03 | 2021-06-30 | 166 |  |
| 172 | 19.1 | Postavljanje kanti |  | 43d | 2021-05-03 | 2021-06-30 |  | 0d |
| 173 | 19.2 | Instalacija softvera |  | 43d | 2021-05-03 | 2021-06-30 |  | 0d |
| 174 | 19.3 | Postavljanje veb-portala na Internet |  | 43d | 2021-05-03 | 2021-06-30 |  | 0d |
| 175 | 19.4 | Administracija postupka puštanja sistema u rad |  | 43d | 2021-05-03 | 2021-06-30 |  | 0d |
| 176 | 19.5 | Obuka osoblja i korisnika |  | 43d | 2021-05-03 | 2021-06-30 |  | 0d |
| 177 | 19.6 | Obezbeđivanje mehanizma za podršku |  | 10d | 2021-05-03 | 2021-05-14 |  | 33d |
| 178 | 20 | Prekretnica - Pušten sistem u rad | milestone, manual | 0d | 2021-07-01 | 2021-07-01 | 171 |  |

| ID | WBS | Task | Type | Duration | Start | Finish | Predecessors | Total slack | Constraint |
| --- | --- | --- | --- | --- | --- | --- | --- | --- | --- |
| 179 | 21 | **WP13 - Evaluacija i disiminacija** |  | 194d | 2020-10-01 | 2021-06-30 | 154, 157 |  |  |
| 180 | 21.1 | Prikupljanje utisaka |  | 194d | 2020-10-01 | 2021-06-30 |  | 0d |  |
| 181 | 21.2 | Promovisanje proizvoda |  | 194d | 2020-10-01 | 2021-06-30 |  | 0d |  |
| 182 | 21.3 | Organizovanje marketinških kampanja |  | 100d | 2020-10-01 | 2021-02-18 |  | 0d |  |
| 183 | 21.4 | Obezbeđivanje reklamnog materijala |  | 80d | 2020-10-01 | 2021-01-21 |  | 114d |  |
| 184 | 21.5 | Učestvovanje na sajmovima i konferencijama |  | 94d | 2021-02-19 | 2021-06-30 | 182 | 0d |  |
| 185 | 22 | Prekretnica - Završena evaluacija i disiminacija | milestone, manual | 0d | 2021-07-01 | 2021-07-01 | 179 |  |  |
| 186 | 23 | **WP14 - Upravljanje projektom** |  | 779d | 2018-07-02 | 2021-06-30 |  |  |  |
| 187 | 23.1 | Rukovođenje projektom |  | 779d | 2018-07-02 | 2021-06-30 |  | 0d |  |
| 188 | 23.2 | Minimalizacija budžeta |  | 120d | 2018-07-02 | 2018-12-14 |  | 0d |  |
| 189 | 23.3 | Minimalizacija rizika |  | 779d | 2018-07-02 | 2021-06-30 |  | 0d |  |
| 190 | 23.4 | Minimalizacija iskorišćenja resursa |  | 300d | 2018-12-17 | 2020-02-12 | 188 | 0d |  |
| 191 | 23.5 | Upravljanje aktivnostima |  | 779d | 2018-07-02 | 2021-06-30 |  | 0d |  |
| 192 | 23.6 | **Nedeljni sastanak - video konferencija** |  | 779d | 2018-07-02 | 2021-06-30 |  |  |  |
| 193 | 23.6.1 | Nedeljni sastanak - video konferencija 1 | manual | 1d | 2018-07-03 | 2018-07-03 |  |  | start no earlier than 2018-07-03 |
| 194 | 23.6.2 | Nedeljni sastanak - video konferencija 2 | manual | 1d | 2018-07-10 | 2018-07-10 |  |  | start no earlier than 2018-07-10 |
| 195 | 23.6.3 | Nedeljni sastanak - video konferencija 3 | manual | 1d | 2018-07-17 | 2018-07-17 |  |  | start no earlier than 2018-07-17 |
| 196 | 23.6.4 | Nedeljni sastanak - video konferencija 4 | manual | 1d | 2018-07-24 | 2018-07-24 |  |  | start no earlier than 2018-07-24 |
| 197 | 23.6.5 | Nedeljni sastanak - video konferencija 5 | manual | 1d | 2018-07-31 | 2018-07-31 |  |  | start no earlier than 2018-07-31 |
| 198 | 23.6.6 | Nedeljni sastanak - video konferencija 6 | manual | 1d | 2018-08-07 | 2018-08-07 |  |  | start no earlier than 2018-08-07 |
| 199 | 23.6.7 | Nedeljni sastanak - video konferencija 7 | manual | 1d | 2018-08-14 | 2018-08-14 |  |  | start no earlier than 2018-08-14 |
| 200 | 23.6.8 | Nedeljni sastanak - video konferencija 8 | manual | 1d | 2018-08-21 | 2018-08-21 |  |  | start no earlier than 2018-08-21 |
| 201 | 23.6.9 | Nedeljni sastanak - video konferencija 9 | manual | 1d | 2018-08-28 | 2018-08-28 |  |  | start no earlier than 2018-08-28 |
| 202 | 23.6.10 | Nedeljni sastanak - video konferencija 10 | manual | 1d | 2018-09-04 | 2018-09-04 |  |  | start no earlier than 2018-09-04 |
| 203 | 23.6.11 | Nedeljni sastanak - video konferencija 11 | manual | 1d | 2018-09-11 | 2018-09-11 |  |  | start no earlier than 2018-09-11 |
| 204 | 23.6.12 | Nedeljni sastanak - video konferencija 12 | manual | 1d | 2018-09-18 | 2018-09-18 |  |  | start no earlier than 2018-09-18 |
| 205 | 23.6.13 | Nedeljni sastanak - video konferencija 13 | manual | 1d | 2018-09-25 | 2018-09-25 |  |  | start no earlier than 2018-09-25 |
| 206 | 23.6.14 | Nedeljni sastanak - video konferencija 14 | manual | 1d | 2018-10-02 | 2018-10-02 |  |  | start no earlier than 2018-10-02 |
| 207 | 23.6.15 | Nedeljni sastanak - video konferencija 15 | manual | 1d | 2018-10-09 | 2018-10-09 |  |  | start no earlier than 2018-10-09 |
| 208 | 23.6.16 | Nedeljni sastanak - video konferencija 16 | manual | 1d | 2018-10-16 | 2018-10-16 |  |  | start no earlier than 2018-10-16 |
| 209 | 23.6.17 | Nedeljni sastanak - video konferencija 17 | manual | 1d | 2018-10-23 | 2018-10-23 |  |  | start no earlier than 2018-10-23 |
| 210 | 23.6.18 | Nedeljni sastanak - video konferencija 18 | manual | 1d | 2018-10-30 | 2018-10-30 |  |  | start no earlier than 2018-10-30 |
| 211 | 23.6.19 | Nedeljni sastanak - video konferencija 19 | manual | 1d | 2018-11-06 | 2018-11-06 |  |  | start no earlier than 2018-11-06 |
| 212 | 23.6.20 | Nedeljni sastanak - video konferencija 20 | manual | 1d | 2018-11-13 | 2018-11-13 |  |  | start no earlier than 2018-11-13 |
| 213 | 23.6.21 | Nedeljni sastanak - video konferencija 21 | manual | 1d | 2018-11-20 | 2018-11-20 |  |  | start no earlier than 2018-11-20 |
| 214 | 23.6.22 | Nedeljni sastanak - video konferencija 22 | manual | 1d | 2018-11-27 | 2018-11-27 |  |  | start no earlier than 2018-11-27 |
| 215 | 23.6.23 | Nedeljni sastanak - video konferencija 23 | manual | 1d | 2018-12-04 | 2018-12-04 |  |  | start no earlier than 2018-12-04 |
| 216 | 23.6.24 | Nedeljni sastanak - video konferencija 24 | manual | 1d | 2018-12-11 | 2018-12-11 |  |  | start no earlier than 2018-12-11 |
| 217 | 23.6.25 | Nedeljni sastanak - video konferencija 25 | manual | 1d | 2018-12-18 | 2018-12-18 |  |  | start no earlier than 2018-12-18 |
| 218 | 23.6.26 | Nedeljni sastanak - video konferencija 26 | manual | 1d | 2018-12-25 | 2018-12-25 |  |  | start no earlier than 2018-12-25 |
| 219 | 23.6.27 | Nedeljni sastanak - video konferencija 27 | manual | 1d | 2019-01-01 | 2019-01-01 |  |  | start no earlier than 2019-01-01 |
| 220 | 23.6.28 | Nedeljni sastanak - video konferencija 28 | manual | 1d | 2019-01-08 | 2019-01-08 |  |  | start no earlier than 2019-01-08 |
| 221 | 23.6.29 | Nedeljni sastanak - video konferencija 29 | manual | 1d | 2019-01-15 | 2019-01-15 |  |  | start no earlier than 2019-01-15 |
| 222 | 23.6.30 | Nedeljni sastanak - video konferencija 30 | manual | 1d | 2019-01-22 | 2019-01-22 |  |  | start no earlier than 2019-01-22 |
| 223 | 23.6.31 | Nedeljni sastanak - video konferencija 31 | manual | 1d | 2019-01-29 | 2019-01-29 |  |  | start no earlier than 2019-01-29 |
| 224 | 23.6.32 | Nedeljni sastanak - video konferencija 32 | manual | 1d | 2019-02-05 | 2019-02-05 |  |  | start no earlier than 2019-02-05 |
| 225 | 23.6.33 | Nedeljni sastanak - video konferencija 33 | manual | 1d | 2019-02-12 | 2019-02-12 |  |  | start no earlier than 2019-02-12 |
| 226 | 23.6.34 | Nedeljni sastanak - video konferencija 34 | manual | 1d | 2019-02-19 | 2019-02-19 |  |  | start no earlier than 2019-02-19 |
| 227 | 23.6.35 | Nedeljni sastanak - video konferencija 35 | manual | 1d | 2019-02-26 | 2019-02-26 |  |  | start no earlier than 2019-02-26 |
| 228 | 23.6.36 | Nedeljni sastanak - video konferencija 36 | manual | 1d | 2019-03-05 | 2019-03-05 |  |  | start no earlier than 2019-03-05 |
| 229 | 23.6.37 | Nedeljni sastanak - video konferencija 37 | manual | 1d | 2019-03-12 | 2019-03-12 |  |  | start no earlier than 2019-03-12 |
| 230 | 23.6.38 | Nedeljni sastanak - video konferencija 38 | manual | 1d | 2019-03-19 | 2019-03-19 |  |  | start no earlier than 2019-03-19 |
| 231 | 23.6.39 | Nedeljni sastanak - video konferencija 39 | manual | 1d | 2019-03-26 | 2019-03-26 |  |  | start no earlier than 2019-03-26 |
| 232 | 23.6.40 | Nedeljni sastanak - video konferencija 40 | manual | 1d | 2019-04-02 | 2019-04-02 |  |  | start no earlier than 2019-04-02 |
| 233 | 23.6.41 | Nedeljni sastanak - video konferencija 41 | manual | 1d | 2019-04-09 | 2019-04-09 |  |  | start no earlier than 2019-04-09 |
| 234 | 23.6.42 | Nedeljni sastanak - video konferencija 42 | manual | 1d | 2019-04-16 | 2019-04-16 |  |  | start no earlier than 2019-04-16 |
| 235 | 23.6.43 | Nedeljni sastanak - video konferencija 43 | manual | 1d | 2019-04-23 | 2019-04-23 |  |  | start no earlier than 2019-04-23 |
| 236 | 23.6.44 | Nedeljni sastanak - video konferencija 44 | manual | 1d | 2019-04-30 | 2019-04-30 |  |  | start no earlier than 2019-04-30 |
| 237 | 23.6.45 | Nedeljni sastanak - video konferencija 45 | manual | 1d | 2019-05-07 | 2019-05-07 |  |  | start no earlier than 2019-05-07 |
| 238 | 23.6.46 | Nedeljni sastanak - video konferencija 46 | manual | 1d | 2019-05-14 | 2019-05-14 |  |  | start no earlier than 2019-05-14 |
| 239 | 23.6.47 | Nedeljni sastanak - video konferencija 47 | manual | 1d | 2019-05-21 | 2019-05-21 |  |  | start no earlier than 2019-05-21 |
| 240 | 23.6.48 | Nedeljni sastanak - video konferencija 48 | manual | 1d | 2019-05-28 | 2019-05-28 |  |  | start no earlier than 2019-05-28 |
| 241 | 23.6.49 | Nedeljni sastanak - video konferencija 49 | manual | 1d | 2019-06-04 | 2019-06-04 |  |  | start no earlier than 2019-06-04 |
| 242 | 23.6.50 | Nedeljni sastanak - video konferencija 50 | manual | 1d | 2019-06-11 | 2019-06-11 |  |  | start no earlier than 2019-06-11 |
| 243 | 23.6.51 | Nedeljni sastanak - video konferencija 51 | manual | 1d | 2019-06-18 | 2019-06-18 |  |  | start no earlier than 2019-06-18 |
| 244 | 23.6.52 | Nedeljni sastanak - video konferencija 52 | manual | 1d | 2019-06-25 | 2019-06-25 |  |  | start no earlier than 2019-06-25 |
| 245 | 23.6.53 | Nedeljni sastanak - video konferencija 53 | manual | 1d | 2019-07-02 | 2019-07-02 |  |  | start no earlier than 2019-07-02 |
| 246 | 23.6.54 | Nedeljni sastanak - video konferencija 54 | manual | 1d | 2019-07-09 | 2019-07-09 |  |  | start no earlier than 2019-07-09 |
| 247 | 23.6.55 | Nedeljni sastanak - video konferencija 55 | manual | 1d | 2019-07-16 | 2019-07-16 |  |  | start no earlier than 2019-07-16 |
| 248 | 23.6.56 | Nedeljni sastanak - video konferencija 56 | manual | 1d | 2019-07-23 | 2019-07-23 |  |  | start no earlier than 2019-07-23 |

| ID | WBS | Task | Type | Duration | Start | Finish | Constraint |
| --- | --- | --- | --- | --- | --- | --- | --- |
| 249 | 23.6.57 | Nedeljni sastanak - video konferencija 57 | manual | 1d | 2019-07-30 | 2019-07-30 | start no earlier than 2019-07-30 |
| 250 | 23.6.58 | Nedeljni sastanak - video konferencija 58 | manual | 1d | 2019-08-06 | 2019-08-06 | start no earlier than 2019-08-06 |
| 251 | 23.6.59 | Nedeljni sastanak - video konferencija 59 | manual | 1d | 2019-08-13 | 2019-08-13 | start no earlier than 2019-08-13 |
| 252 | 23.6.60 | Nedeljni sastanak - video konferencija 60 | manual | 1d | 2019-08-20 | 2019-08-20 | start no earlier than 2019-08-20 |
| 253 | 23.6.61 | Nedeljni sastanak - video konferencija 61 | manual | 1d | 2019-08-27 | 2019-08-27 | start no earlier than 2019-08-27 |
| 254 | 23.6.62 | Nedeljni sastanak - video konferencija 62 | manual | 1d | 2019-09-03 | 2019-09-03 | start no earlier than 2019-09-03 |
| 255 | 23.6.63 | Nedeljni sastanak - video konferencija 63 | manual | 1d | 2019-09-10 | 2019-09-10 | start no earlier than 2019-09-10 |
| 256 | 23.6.64 | Nedeljni sastanak - video konferencija 64 | manual | 1d | 2019-09-17 | 2019-09-17 | start no earlier than 2019-09-17 |
| 257 | 23.6.65 | Nedeljni sastanak - video konferencija 65 | manual | 1d | 2019-09-24 | 2019-09-24 | start no earlier than 2019-09-24 |
| 258 | 23.6.66 | Nedeljni sastanak - video konferencija 66 | manual | 1d | 2019-10-01 | 2019-10-01 | start no earlier than 2019-10-01 |
| 259 | 23.6.67 | Nedeljni sastanak - video konferencija 67 | manual | 1d | 2019-10-08 | 2019-10-08 | start no earlier than 2019-10-08 |
| 260 | 23.6.68 | Nedeljni sastanak - video konferencija 68 | manual | 1d | 2019-10-15 | 2019-10-15 | start no earlier than 2019-10-15 |
| 261 | 23.6.69 | Nedeljni sastanak - video konferencija 69 | manual | 1d | 2019-10-22 | 2019-10-22 | start no earlier than 2019-10-22 |
| 262 | 23.6.70 | Nedeljni sastanak - video konferencija 70 | manual | 1d | 2019-10-29 | 2019-10-29 | start no earlier than 2019-10-29 |
| 263 | 23.6.71 | Nedeljni sastanak - video konferencija 71 | manual | 1d | 2019-11-05 | 2019-11-05 | start no earlier than 2019-11-05 |
| 264 | 23.6.72 | Nedeljni sastanak - video konferencija 72 | manual | 1d | 2019-11-12 | 2019-11-12 | start no earlier than 2019-11-12 |
| 265 | 23.6.73 | Nedeljni sastanak - video konferencija 73 | manual | 1d | 2019-11-19 | 2019-11-19 | start no earlier than 2019-11-19 |
| 266 | 23.6.74 | Nedeljni sastanak - video konferencija 74 | manual | 1d | 2019-11-26 | 2019-11-26 | start no earlier than 2019-11-26 |
| 267 | 23.6.75 | Nedeljni sastanak - video konferencija 75 | manual | 1d | 2019-12-03 | 2019-12-03 | start no earlier than 2019-12-03 |
| 268 | 23.6.76 | Nedeljni sastanak - video konferencija 76 | manual | 1d | 2019-12-10 | 2019-12-10 | start no earlier than 2019-12-10 |
| 269 | 23.6.77 | Nedeljni sastanak - video konferencija 77 | manual | 1d | 2019-12-17 | 2019-12-17 | start no earlier than 2019-12-17 |
| 270 | 23.6.78 | Nedeljni sastanak - video konferencija 78 | manual | 1d | 2019-12-24 | 2019-12-24 | start no earlier than 2019-12-24 |
| 271 | 23.6.79 | Nedeljni sastanak - video konferencija 79 | manual | 1d | 2019-12-31 | 2019-12-31 | start no earlier than 2019-12-31 |
| 272 | 23.6.80 | Nedeljni sastanak - video konferencija 80 | manual | 1d | 2020-01-07 | 2020-01-07 | start no earlier than 2020-01-07 |
| 273 | 23.6.81 | Nedeljni sastanak - video konferencija 81 | manual | 1d | 2020-01-14 | 2020-01-14 | start no earlier than 2020-01-14 |
| 274 | 23.6.82 | Nedeljni sastanak - video konferencija 82 | manual | 1d | 2020-01-21 | 2020-01-21 | start no earlier than 2020-01-21 |
| 275 | 23.6.83 | Nedeljni sastanak - video konferencija 83 | manual | 1d | 2020-01-28 | 2020-01-28 | start no earlier than 2020-01-28 |
| 276 | 23.6.84 | Nedeljni sastanak - video konferencija 84 | manual | 1d | 2020-02-04 | 2020-02-04 | start no earlier than 2020-02-04 |
| 277 | 23.6.85 | Nedeljni sastanak - video konferencija 85 | manual | 1d | 2020-02-11 | 2020-02-11 | start no earlier than 2020-02-11 |
| 278 | 23.6.86 | Nedeljni sastanak - video konferencija 86 | manual | 1d | 2020-02-18 | 2020-02-18 | start no earlier than 2020-02-18 |
| 279 | 23.6.87 | Nedeljni sastanak - video konferencija 87 | manual | 1d | 2020-02-25 | 2020-02-25 | start no earlier than 2020-02-25 |
| 280 | 23.6.88 | Nedeljni sastanak - video konferencija 88 | manual | 1d | 2020-03-03 | 2020-03-03 | start no earlier than 2020-03-03 |
| 281 | 23.6.89 | Nedeljni sastanak - video konferencija 89 | manual | 1d | 2020-03-10 | 2020-03-10 | start no earlier than 2020-03-10 |
| 282 | 23.6.90 | Nedeljni sastanak - video konferencija 90 | manual | 1d | 2020-03-17 | 2020-03-17 | start no earlier than 2020-03-17 |
| 283 | 23.6.91 | Nedeljni sastanak - video konferencija 91 | manual | 1d | 2020-03-24 | 2020-03-24 | start no earlier than 2020-03-24 |
| 284 | 23.6.92 | Nedeljni sastanak - video konferencija 92 | manual | 1d | 2020-03-31 | 2020-03-31 | start no earlier than 2020-03-31 |
| 285 | 23.6.93 | Nedeljni sastanak - video konferencija 93 | manual | 1d | 2020-04-07 | 2020-04-07 | start no earlier than 2020-04-07 |
| 286 | 23.6.94 | Nedeljni sastanak - video konferencija 94 | manual | 1d | 2020-04-14 | 2020-04-14 | start no earlier than 2020-04-14 |
| 287 | 23.6.95 | Nedeljni sastanak - video konferencija 95 | manual | 1d | 2020-04-21 | 2020-04-21 | start no earlier than 2020-04-21 |
| 288 | 23.6.96 | Nedeljni sastanak - video konferencija 96 | manual | 1d | 2020-04-28 | 2020-04-28 | start no earlier than 2020-04-28 |
| 289 | 23.6.97 | Nedeljni sastanak - video konferencija 97 | manual | 1d | 2020-05-05 | 2020-05-05 | start no earlier than 2020-05-05 |
| 290 | 23.6.98 | Nedeljni sastanak - video konferencija 98 | manual | 1d | 2020-05-12 | 2020-05-12 | start no earlier than 2020-05-12 |
| 291 | 23.6.99 | Nedeljni sastanak - video konferencija 99 | manual | 1d | 2020-05-19 | 2020-05-19 | start no earlier than 2020-05-19 |
| 292 | 23.6.100 | Nedeljni sastanak - video konferencija 100 | manual | 1d | 2020-05-26 | 2020-05-26 | start no earlier than 2020-05-26 |
| 293 | 23.6.101 | Nedeljni sastanak - video konferencija 101 | manual | 1d | 2020-06-02 | 2020-06-02 | start no earlier than 2020-06-02 |
| 294 | 23.6.102 | Nedeljni sastanak - video konferencija 102 | manual | 1d | 2020-06-09 | 2020-06-09 | start no earlier than 2020-06-09 |
| 295 | 23.6.103 | Nedeljni sastanak - video konferencija 103 | manual | 1d | 2020-06-16 | 2020-06-16 | start no earlier than 2020-06-16 |
| 296 | 23.6.104 | Nedeljni sastanak - video konferencija 104 | manual | 1d | 2020-06-23 | 2020-06-23 | start no earlier than 2020-06-23 |
| 297 | 23.6.105 | Nedeljni sastanak - video konferencija 105 | manual | 1d | 2020-06-30 | 2020-06-30 | start no earlier than 2020-06-30 |
| 298 | 23.6.106 | Nedeljni sastanak - video konferencija 106 | manual | 1d | 2020-07-07 | 2020-07-07 | start no earlier than 2020-07-07 |
| 299 | 23.6.107 | Nedeljni sastanak - video konferencija 107 | manual | 1d | 2020-07-14 | 2020-07-14 | start no earlier than 2020-07-14 |
| 300 | 23.6.108 | Nedeljni sastanak - video konferencija 108 | manual | 1d | 2020-07-21 | 2020-07-21 | start no earlier than 2020-07-21 |
| 301 | 23.6.109 | Nedeljni sastanak - video konferencija 109 | manual | 1d | 2020-07-28 | 2020-07-28 | start no earlier than 2020-07-28 |
| 302 | 23.6.110 | Nedeljni sastanak - video konferencija 110 | manual | 1d | 2020-08-04 | 2020-08-04 | start no earlier than 2020-08-04 |
| 303 | 23.6.111 | Nedeljni sastanak - video konferencija 111 | manual | 1d | 2020-08-11 | 2020-08-11 | start no earlier than 2020-08-11 |
| 304 | 23.6.112 | Nedeljni sastanak - video konferencija 112 | manual | 1d | 2020-08-18 | 2020-08-18 | start no earlier than 2020-08-18 |
| 305 | 23.6.113 | Nedeljni sastanak - video konferencija 113 | manual | 1d | 2020-08-25 | 2020-08-25 | start no earlier than 2020-08-25 |
| 306 | 23.6.114 | Nedeljni sastanak - video konferencija 114 | manual | 1d | 2020-09-01 | 2020-09-01 | start no earlier than 2020-09-01 |
| 307 | 23.6.115 | Nedeljni sastanak - video konferencija 115 | manual | 1d | 2020-09-08 | 2020-09-08 | start no earlier than 2020-09-08 |
| 308 | 23.6.116 | Nedeljni sastanak - video konferencija 116 | manual | 1d | 2020-09-15 | 2020-09-15 | start no earlier than 2020-09-15 |
| 309 | 23.6.117 | Nedeljni sastanak - video konferencija 117 | manual | 1d | 2020-09-22 | 2020-09-22 | start no earlier than 2020-09-22 |
| 310 | 23.6.118 | Nedeljni sastanak - video konferencija 118 | manual | 1d | 2020-09-29 | 2020-09-29 | start no earlier than 2020-09-29 |
| 311 | 23.6.119 | Nedeljni sastanak - video konferencija 119 | manual | 1d | 2020-10-06 | 2020-10-06 | start no earlier than 2020-10-06 |
| 312 | 23.6.120 | Nedeljni sastanak - video konferencija 120 | manual | 1d | 2020-10-13 | 2020-10-13 | start no earlier than 2020-10-13 |
| 313 | 23.6.121 | Nedeljni sastanak - video konferencija 121 | manual | 1d | 2020-10-20 | 2020-10-20 | start no earlier than 2020-10-20 |
| 314 | 23.6.122 | Nedeljni sastanak - video konferencija 122 | manual | 1d | 2020-10-27 | 2020-10-27 | start no earlier than 2020-10-27 |
| 315 | 23.6.123 | Nedeljni sastanak - video konferencija 123 | manual | 1d | 2020-11-03 | 2020-11-03 | start no earlier than 2020-11-03 |
| 316 | 23.6.124 | Nedeljni sastanak - video konferencija 124 | manual | 1d | 2020-11-10 | 2020-11-10 | start no earlier than 2020-11-10 |
| 317 | 23.6.125 | Nedeljni sastanak - video konferencija 125 | manual | 1d | 2020-11-17 | 2020-11-17 | start no earlier than 2020-11-17 |
| 318 | 23.6.126 | Nedeljni sastanak - video konferencija 126 | manual | 1d | 2020-11-24 | 2020-11-24 | start no earlier than 2020-11-24 |

| ID | WBS | Task | Type | Duration | Start | Finish | Predecessors | Total slack | Constraint |
| --- | --- | --- | --- | --- | --- | --- | --- | --- | --- |
| 319 | 23.6.127 | Nedeljni sastanak - video konferencija 127 | manual | 1d | 2020-12-01 | 2020-12-01 |  |  | start no earlier than 2020-12-01 |
| 320 | 23.6.128 | Nedeljni sastanak - video konferencija 128 | manual | 1d | 2020-12-08 | 2020-12-08 |  |  | start no earlier than 2020-12-08 |
| 321 | 23.6.129 | Nedeljni sastanak - video konferencija 129 | manual | 1d | 2020-12-15 | 2020-12-15 |  |  | start no earlier than 2020-12-15 |
| 322 | 23.6.130 | Nedeljni sastanak - video konferencija 130 | manual | 1d | 2020-12-22 | 2020-12-22 |  |  | start no earlier than 2020-12-22 |
| 323 | 23.6.131 | Nedeljni sastanak - video konferencija 131 | manual | 1d | 2020-12-29 | 2020-12-29 |  |  | start no earlier than 2020-12-29 |
| 324 | 23.6.132 | Nedeljni sastanak - video konferencija 132 | manual | 1d | 2021-01-05 | 2021-01-05 |  |  | start no earlier than 2021-01-05 |
| 325 | 23.6.133 | Nedeljni sastanak - video konferencija 133 | manual | 1d | 2021-01-12 | 2021-01-12 |  |  | start no earlier than 2021-01-12 |
| 326 | 23.6.134 | Nedeljni sastanak - video konferencija 134 | manual | 1d | 2021-01-19 | 2021-01-19 |  |  | start no earlier than 2021-01-19 |
| 327 | 23.6.135 | Nedeljni sastanak - video konferencija 135 | manual | 1d | 2021-01-26 | 2021-01-26 |  |  | start no earlier than 2021-01-26 |
| 328 | 23.6.136 | Nedeljni sastanak - video konferencija 136 | manual | 1d | 2021-02-02 | 2021-02-02 |  |  | start no earlier than 2021-02-02 |
| 329 | 23.6.137 | Nedeljni sastanak - video konferencija 137 | manual | 1d | 2021-02-09 | 2021-02-09 |  |  | start no earlier than 2021-02-09 |
| 330 | 23.6.138 | Nedeljni sastanak - video konferencija 138 | manual | 1d | 2021-02-16 | 2021-02-16 |  |  | start no earlier than 2021-02-16 |
| 331 | 23.6.139 | Nedeljni sastanak - video konferencija 139 | manual | 1d | 2021-02-23 | 2021-02-23 |  |  | start no earlier than 2021-02-23 |
| 332 | 23.6.140 | Nedeljni sastanak - video konferencija 140 | manual | 1d | 2021-03-02 | 2021-03-02 |  |  | start no earlier than 2021-03-02 |
| 333 | 23.6.141 | Nedeljni sastanak - video konferencija 141 | manual | 1d | 2021-03-09 | 2021-03-09 |  |  | start no earlier than 2021-03-09 |
| 334 | 23.6.142 | Nedeljni sastanak - video konferencija 142 | manual | 1d | 2021-03-16 | 2021-03-16 |  |  | start no earlier than 2021-03-16 |
| 335 | 23.6.143 | Nedeljni sastanak - video konferencija 143 | manual | 1d | 2021-03-23 | 2021-03-23 |  |  | start no earlier than 2021-03-23 |
| 336 | 23.6.144 | Nedeljni sastanak - video konferencija 144 | manual | 1d | 2021-03-30 | 2021-03-30 |  |  | start no earlier than 2021-03-30 |
| 337 | 23.6.145 | Nedeljni sastanak - video konferencija 145 | manual | 1d | 2021-04-06 | 2021-04-06 |  |  | start no earlier than 2021-04-06 |
| 338 | 23.6.146 | Nedeljni sastanak - video konferencija 146 | manual | 1d | 2021-04-13 | 2021-04-13 |  |  | start no earlier than 2021-04-13 |
| 339 | 23.6.147 | Nedeljni sastanak - video konferencija 147 | manual | 1d | 2021-04-20 | 2021-04-20 |  |  | start no earlier than 2021-04-20 |
| 340 | 23.6.148 | Nedeljni sastanak - video konferencija 148 | manual | 1d | 2021-04-27 | 2021-04-27 |  |  | start no earlier than 2021-04-27 |
| 341 | 23.6.149 | Nedeljni sastanak - video konferencija 149 | manual | 1d | 2021-05-04 | 2021-05-04 |  |  | start no earlier than 2021-05-04 |
| 342 | 23.6.150 | Nedeljni sastanak - video konferencija 150 | manual | 1d | 2021-05-11 | 2021-05-11 |  |  | start no earlier than 2021-05-11 |
| 343 | 23.6.151 | Nedeljni sastanak - video konferencija 151 | manual | 1d | 2021-05-18 | 2021-05-18 |  |  | start no earlier than 2021-05-18 |
| 344 | 23.6.152 | Nedeljni sastanak - video konferencija 152 | manual | 1d | 2021-05-25 | 2021-05-25 |  |  | start no earlier than 2021-05-25 |
| 345 | 23.6.153 | Nedeljni sastanak - video konferencija 153 | manual | 1d | 2021-06-01 | 2021-06-01 |  |  | start no earlier than 2021-06-01 |
| 346 | 23.6.154 | Nedeljni sastanak - video konferencija 154 | manual | 1d | 2021-06-08 | 2021-06-08 |  |  | start no earlier than 2021-06-08 |
| 347 | 23.6.155 | Nedeljni sastanak - video konferencija 155 | manual | 1d | 2021-06-15 | 2021-06-15 |  |  | start no earlier than 2021-06-15 |
| 348 | 23.6.156 | Nedeljni sastanak - video konferencija 156 | manual | 1d | 2021-06-22 | 2021-06-22 |  |  | start no earlier than 2021-06-22 |
| 349 | 23.6.157 | Nedeljni sastanak - video konferencija 157 | manual | 1d | 2021-06-29 | 2021-06-29 |  |  | start no earlier than 2021-06-29 |
| 350 | 23.7 | Dorada MS Project fajla |  | 779d | 2018-07-02 | 2021-06-30 |  | 0d |  |
| 351 | 23.8 | Upravljanje merama kvailteta i postupcima |  | 359d | 2020-02-13 | 2021-06-30 | 190 | 0d |  |
| 352 | 23.9 | Upravljanje načinom komunikacije |  | 100d | 2018-07-02 | 2018-11-16 |  | 679d |  |
